# 进度计划-薛江南-23280104

Schedule from MS Project, 2026-01-01 to 2026-12-25, costs in ¥.

## Calendars

- 标准: Mon-Fri 08:00-12:00, 13:00-17:00; Sat-Sun off. Exceptions (off unless hours are given): 2026-01-01 to 2026-01-03 (元旦假期), 2026-01-04 08:00-12:00, 13:00-17:00 (元旦假期调休), 2026-02-14 08:00-12:00, 13:00-17:00 (春节调休), 2026-02-15 to 2026-02-23 (春节), 2026-02-28 08:00-12:00, 13:00-17:00 (春节调休), 2026-04-04 to 2026-04-06 (清明假期), 2026-05-01 to 2026-05-05 (劳动节假期), 2026-05-09 08:00-12:00, 13:00-17:00 (劳动节假期调休), 2026-06-19 to 2026-06-21 (端午节假期), 2026-09-25 to 2026-09-27 (中秋节假期), 2026-10-01 to 2026-10-07 (国庆节假期), 2026-10-10 08:00-12:00, 13:00-17:00 (国庆节假期调休).

## Resources

| Resource | Unit | Rate | Cost per use |
| --- | --- | --- | --- |
| 项目经理 |  | 30 |  |
| 测试人员 |  | 30 |  |
| 产品经理 |  | 25 |  |
| 后端开发A |  | 35 |  |
| 架构师 |  | 25 |  |
| 客户代表 |  | 50 |  |
| 前端开发 |  | 30 |  |
| 全栈开发 |  | 30 |  |
| 设计师 |  | 25 |  |
| 数据库管理员 |  | 30 |  |
| 运维工程师 |  | 25 |  |
| 云服务器 | 台/月 | 2500 | 2500 |
| SSL证书 | 个/年 | 800 | 800 |
| 域名 | 个/年 | 100 | 100 |
| 开发工具许可 | 套 | 3000 | 3000 |
| 设计软件许可 | 套 | 5000 | 5000 |
| 市场推广费 |  |  |  |
| 培训费用 |  |  |  |
| 办公耗材费 |  |  |  |
| 差旅交通费 |  |  |  |
| 应急储备金 |  |  |  |
| 后端开发B |  | 35 |  |
| 预算 |  |  |  |

## Schedule

| ID | WBS | Task | Duration | Start | Finish | Predecessors | Baseline start | Baseline finish | Baseline duration | Total slack | Resources | Work | Cost | Baseline cost |
| --- | --- | --- | --- | --- | --- | --- | --- | --- | --- | --- | --- | --- | --- | --- |
| 1 | 1 | **校园二手交易平台项目** | 243d | 2026-01-01 | 2026-12-25 |  | 2026-01-01 | 2026-12-28 | 243.5d | 0d |  | 5036.8h | 191,320 | 192,720 |
| 2 | 1.1 | **项目启动与需求分析** | 26d | 2026-01-01 | 2026-02-06 |  | 2026-01-01 | 2026-02-06 | 26d | 0d |  | 336h | 10,280 | 10,280 |
| 3 | 1.1.1 | 项目启动会议 | 3d | 2026-01-01 | 2026-01-05 |  | 2026-01-01 | 2026-01-05 | 3d | 0d | 项目经理; 测试人员; 产品经理; 架构师; 客户代表; 前端开发; 全栈开发; 设计师; 数据库管理员; 后端开发A; 后端开发B | 104h | 3,320 | 3,320 |
| 4 | 1.1.2 | 市场调研与用户需求收集 | 10d | 2026-01-06 | 2026-01-19 | 3 | 2026-01-06 | 2026-01-19 | 10d | 0d | 产品经理; 前端开发 [50%]; 差旅交通费 [0.1%] | 80h | 2,400 | 2,400 |
| 5 | 1.1.3 | 需求分析与功能规划 | 5d | 2026-01-20 | 2026-01-26 | 4 | 2026-01-20 | 2026-01-26 | 5d | 0d | 产品经理 | 40h | 1,000 | 1,000 |
| 6 | 1.1.4 | 编写需求规格说明书 | 3d | 2026-01-27 | 2026-01-29 | 5 | 2026-01-27 | 2026-01-29 | 3d | 0d | 产品经理; 项目经理 | 48h | 1,320 | 1,320 |
| 7 | 1.1.5 | 需求评审会议 | 1d | 2026-01-30 | 2026-01-30 | 6 | 2026-01-30 | 2026-01-30 | 1d | 0d | 项目经理; 产品经理; 客户代表; 办公耗材费 [0.1%] | 24h | 1,040 | 1,040 |
| 8 | 1.1.6 | 项目风险管理计划制定 | 5d | 2026-02-02 | 2026-02-06 | 7 | 2026-02-02 | 2026-02-06 | 5d | 0d | 项目经理 | 40h | 1,200 | 1,200 |
| 9 | 1.2 | **系统设计** | 17d | 2026-02-09 | 2026-03-09 |  | 2026-02-09 | 2026-03-09 | 17d | 0d |  | 480h | 29,960 | 29,960 |
| 10 | 1.2.1 | 系统架构设计 | 16d | 2026-02-09 | 2026-02-27 | 8 | 2026-02-09 | 2026-02-27 | 16d | 0d | 项目经理 [80%]; 架构师 | 160h | 4,400 | 4,400 |
| 11 | 1.2.2 | 数据库设计 | 7d | 2026-02-09 | 2026-02-24 | 8 | 2026-02-09 | 2026-02-24 | 7d | 3d | 数据库管理员 | 56h | 1,680 | 1,680 |
| 12 | 1.2.3 | UI/UX界面设计 | 10d | 2026-02-09 | 2026-02-27 | 8 | 2026-02-09 | 2026-02-27 | 10d | 0d | 设计师; 设计软件许可 [1 套] | 80h | 12,000 | 12,000 |
| 13 | 1.2.4 | 设计评审 | 2d | 2026-02-28 | 2026-03-02 | 10, 11, 12 | 2026-02-28 | 2026-03-02 | 2d | 0d | 项目经理; 架构师; 设计师 | 48h | 1,280 | 1,280 |
| 14 | 1.2.5 | 技术选型与开发环境准备 | 2d | 2026-03-03 | 2026-03-04 | 13 | 2026-03-03 | 2026-03-04 | 2d | 0d | 前端开发; 后端开发A; 全栈开发; 后端开发B; 开发工具许可 [1 套] | 64h | 8,080 | 8,080 |
| 15 | 1.2.6 | 系统原型设计评审 | 3d | 2026-03-05 | 2026-03-09 | 14 | 2026-03-05 | 2026-03-09 | 3d | 0d | 项目经理; 产品经理; 客户代表 | 72h | 2,520 | 2,520 |
| 16 | 1.3 | **开发实施** | 91d | 2026-03-10 | 2026-07-20 |  | 2026-03-10 | 2026-07-21 | 91.5d | 0d |  | 1868.8h | 66,200 | 66,280 |
| 17 | 1.3.1 | 用户模块开发 | 10d | 2026-03-10 | 2026-03-23 | 15 | 2026-03-10 | 2026-03-23 | 10d | 0d | 前端开发; 后端开发A; 后端开发B; 云服务器 [1 台/月] | 240h | 13,000 | 13,000 |
| 18 | 1.3.2 | 商品发布与管理模块 | 20d | 2026-03-24 | 2026-04-21 | 17 | 2026-03-24 | 2026-04-21 | 20d | 0d | 前端开发; 后端开发A; 后端开发B | 480h | 16,000 | 16,000 |
| 19 | 1.3.3 | 搜索与分类模块 | 10d | 2026-04-22 | 2026-05-08 | 18 | 2026-04-22 | 2026-05-08 | 10d | 0d | 后端开发A; 后端开发B | 160h | 5,600 | 5,600 |
| 20 | 1.3.4 | 在线聊天系统 | 14d | 2026-05-09 | 2026-05-27 | 19 | 2026-05-09 | 2026-05-27 | 14d | 0d | 全栈开发; 后端开发A; 后端开发B | 336h | 11,200 | 11,200 |
| 21 | 1.3.5 | 交易与支付模块 | 10d | 2026-05-28 | 2026-06-10 | 20 | 2026-05-28 | 2026-06-10 | 10d | 0d | 前端开发; 全栈开发; 后端开发A | 240h | 7,600 | 7,600 |
| 22 | 1.3.6 | 后台管理系统 | 17d | 2026-06-11 | 2026-07-06 | 21 | 2026-06-11 | 2026-07-07 | 17.5d | 0d | 前端开发; 后端开发A; 设计师 [80%] | 332.8h | 10,000 | 10,080 |
| 23 | 1.3.7 | 第三方接口集成开发 | 10d | 2026-07-07 | 2026-07-20 | 22 | 2026-07-07 | 2026-07-21 | 10d | 0d | 后端开发B | 80h | 2,800 | 2,800 |
| 24 | 1.4 | **测试与优化** | 74d | 2026-07-21 | 2026-11-06 |  | 2026-07-21 | 2026-11-09 | 74d | 0d |  | 1960h | 64,000 | 64,000 |
| 25 | 1.4.1 | 单元测试 | 20d | 2026-07-21 | 2026-08-17 | 23 | 2026-07-21 | 2026-08-18 | 20d | 0d | 测试人员; 后端开发A [50%]; 前端开发 [50%] | 240h | 7,600 | 7,600 |
| 26 | 1.4.2 | 集成测试 | 14d | 2026-08-18 | 2026-09-04 | 25 | 2026-08-18 | 2026-09-07 | 14d | 0d | 测试人员; 前端开发 [50%]; 后端开发B [50%] | 224h | 7,000 | 7,000 |
| 27 | 1.4.3 | 性能测试与安全测试 | 10d | 2026-09-07 | 2026-09-18 | 26 | 2026-09-07 | 2026-09-21 | 10d | 0d | 测试人员; 后端开发A [50%]; 后端开发B [50%]; 前端开发 [50%] | 200h | 6,400 | 6,400 |
| 28 | 1.4.4 | Bug修复与优化 | 20d | 2026-09-21 | 2026-10-23 | 27 | 2026-09-21 | 2026-10-26 | 20d | 0d | 测试人员; 后端开发A; 前端开发; 全栈开发; 数据库管理员; 后端开发B; 运维工程师 | 1120h | 34,400 | 34,400 |
| 29 | 1.4.5 | 用户验收测试 | 10d | 2026-10-26 | 2026-11-06 | 28 | 2026-10-26 | 2026-11-09 | 10d | 0d | 产品经理; 客户代表 | 160h | 6,000 | 6,000 |
| 30 | 1.4.6 | 用户培训材料准备 | 1d | 2026-07-21 | 2026-07-21 | 23 | 2026-07-21 | 2026-07-22 | 1d | 103d | 产品经理; 客户代表; 培训费用 [0.1%] | 16h | 2,600 | 2,600 |

| ID | WBS | Task | Type | Duration | Start | Finish | Predecessors | Baseline start | Baseline finish | Baseline duration | Total slack | Resources | Work | Cost | Baseline cost |
| --- | --- | --- | --- | --- | --- | --- | --- | --- | --- | --- | --- | --- | --- | --- | --- |
| 31 | 1.5 | **部署上线** |  | 35d | 2026-11-09 | 2026-12-25 | 29, 30 | 2026-11-09 | 2026-12-28 | 35d | 0d |  | 392h | 20,880 | 22,200 |
| 32 | 1.5.1 | 服务器环境部署 |  | 15d | 2026-11-09 | 2026-11-27 | 29 | 2026-11-09 | 2026-11-30 | 15d | 0d | 运维工程师; 后端开发A [50%]; 后端开发B [50%]; SSL证书 [1 个/年]; 域名 [1 个/年]; 云服务器 [1 台/月] | 200h | 12,600 | 12,600 |
| 33 | 1.5.2 | 数据迁移与初始化 |  | 5d | 2026-11-30 | 2026-12-04 | 32 | 2026-11-30 | 2026-12-07 | 5d | 0d | 数据库管理员; 运维工程师 | 80h | 2,200 | 2,200 |
| 34 | 1.5.3 | 上线试运行 |  | 10d | 2026-12-07 | 2026-12-18 | 33 | 2026-12-07 | 2026-12-21 | 10d | 0d | 运维工程师; 市场推广费 [0.1%] | 80h | 5,000 | 5,000 |
| 35 | 1.5.4 | 项目总结与文档归档 |  | 2d | 2026-12-21 | 2026-12-25 | 34 | 2026-12-21 | 2026-12-28 | 5d | 0d | 项目经理; 产品经理; 办公耗材费 [0.1%] | 32h | 1,080 | 2,400 |
| 36 | 1.5.5 | 项目结束 | milestone | 0d | 2026-12-25 | 2026-12-25 | 35 | 2026-12-28 | 2026-12-28 | 0d | 0d |  |  |  |  |
